# RHF Test Plan

How a schedule from MS Project changed from version to version. A marks actual dates.

## Version 1 (saved 2013-04-24)

Note of the change: Add test materials

| ID | WBS | Task | Duration | Start | Finish | Predecessors | Total float | Constraint |
| --- | --- | --- | --- | --- | --- | --- | --- | --- |
| 1 | 1 | **RHF Test phase** | 26d? | 2013-03-12 | 2013-04-16 |  | 0d |  |
| 2 | 1.1 | **Write test case** | 9d? | 2013-03-12 | 2013-03-22 |  | 17d |  |
| 3 |  | Login/Logout | 1d | 2013-03-12 | 2013-03-12 |  | 4d |  |
| 4 |  | User | 3d | 2013-03-13 | 2013-03-15 | 3 | 17d |  |
| 5 |  | Create, view, edit post | 2d | 2013-03-18 | 2013-03-19 | 4 | 17d |  |
| 6 |  | Admin page | 2d | 2013-03-20 | 2013-03-21 | 5 | 17d |  |
| 7 |  | Q&A | 1d? | 2013-03-22 | 2013-03-22 | 6 | 17d |  |
| 8 | 1.2 | **Execute test** | 8d | 2013-03-25 | 2013-04-03 |  | 9d |  |
| 9 |  | Login/Logout | 1d | 2013-03-25 | 2013-03-25 |  | 10.67d | start no earlier than 2013-03-25 |
| 10 |  | User | 1.33d | 2013-03-26 | 2013-03-27 | 9 | 10.67d |  |
| 11 |  | Create, view, edit post | 2d | 2013-03-27 | 2013-03-29 | 10 | 1.67d |  |
| 12 |  | Admin page | 2d | 2013-03-29 | 2013-04-02 | 11 | 1.67d |  |
| 13 |  | Q & A | 1d | 2013-04-03 | 2013-04-03 |  | 17d | start no earlier than 2013-04-03 |
| 14 | 1.3 | **Integration testing** | 6d | 2013-04-04 | 2013-04-11 |  | 3d |  |
| 15 |  | Admin | 3d | 2013-04-04 | 2013-04-08 |  | 11d | start no earlier than 2013-04-04 |
| 16 |  | User | 3d | 2013-04-09 | 2013-04-11 | 15 | 11d |  |
| 17 |  | System testing | 1d | 2013-03-12 | 2013-03-12 |  | 25d |  |
| 18 | 1.5 | **Acceptance testing** | 2d | 2013-04-15 | 2013-04-16 |  | 0d |  |
| 19 |  | Admin | 1d | 2013-04-15 | 2013-04-15 |  | 0d | start no earlier than 2013-04-15 |
| 20 |  | User | 1d | 2013-04-16 | 2013-04-16 | 19 | 0d |  |

## Version 2 (saved 2013-04-25)

Note of the change: Add more

Last finish stays 2013-04-16.

Added:

| ID | Task | Duration | Start | Finish | Resources |
| --- | --- | --- | --- | --- | --- |
| 18 | Performance testing | 1d | 2013-03-12 | 2013-03-12 | BichTT |
